# WBSchart2

Schedule from MS Project, 2010-03-08 to 2010-09-07, costs in $.

## Calendars

- Estándar: Mon-Fri 09:00-13:00, 15:00-19:00; Sat-Sun off.

## Resources

| Resource | Rate |
| --- | --- |
| Country Manager | 40 |
| Silvia Torero | 10 |
| Lissette Davila | 10 |
| Enrique Madrid | 20 |
| Gerardo Buytron | 10 |
| Marco Soto | 10 |
| Aplicativo móvil | 15000 |
| Impresoras | 60000 |
| Documentos de venta | 12000 |
| Material de capacitación | 180 |

## Schedule

| ID | WBS | Task | Duration | Start | Finish | Predecessors | Total slack | Free slack | Constraint | Resources | Work | Cost |
| --- | --- | --- | --- | --- | --- | --- | --- | --- | --- | --- | --- | --- |
| 1 | 1 | **Proyecto inVenta** | 131.54d | 2010-03-08 09:00 | 2010-09-07 15:20 |  | 0d |  |  |  | 914h | 99,393.33 |
| 2 | 1.1 | **1.0 Gestion del Proyecto** | 130.62d | 2010-03-08 09:00 | 2010-09-06 16:00 |  | 0d |  |  |  | 118h | 2,980 |
| 3 | 1.1.1 | **1.1 Iniciacion** | 0.88d | 2010-03-08 09:00 | 2010-03-08 18:00 |  | 0d |  |  |  | 9h | 260 |
| 4 | 1.1.1.1 | **1.1.1 Project Charter** | 0.5d | 2010-03-08 09:00 | 2010-03-08 13:00 |  | 0d |  |  |  | 5h | 140 |
| 5 | 1.1.1.1.1 | 1.1.1.A01 Reunion con el sponsor | 1h | 2010-03-08 09:00 | 2010-03-08 10:00 |  | 0d |  |  | Country Manager; Enrique Madrid | 2h | 60 |
| 6 | 1.1.1.1.2 | 1.1.1 A02 Elaborar Project Charter | 2h | 2010-03-08 10:00 | 2010-03-08 12:00 | 5 | 0d |  |  | Enrique Madrid | 2h | 40 |
| 7 | 1.1.1.1.3 | 1.1.1.A03 Revisar Project Charter | 1h | 2010-03-08 12:00 | 2010-03-08 13:00 | 6 | 0d |  |  | Country Manager | 1h | 40 |
| 8 | 1.1.1.2 | **1.1.2 Scope Statement** | 0.38d | 2010-03-08 15:00 | 2010-03-08 18:00 |  | 0d |  |  |  | 4h | 120 |
| 9 | 1.1.1.2.1 | 1.1.2.A01 Reunion con el sponsor | 1h | 2010-03-08 15:00 | 2010-03-08 16:00 | 7 | 0d |  |  | Country Manager; Enrique Madrid | 2h | 60 |
| 10 | 1.1.1.2.2 | 1.1.2.A02 Elaborar el Scope Statement | 1h | 2010-03-08 16:00 | 2010-03-08 17:00 | 9 | 0d |  |  | Enrique Madrid | 1h | 20 |
| 11 | 1.1.1.2.3 | 1.1.2.A03 Revisar el Scope Statement | 1h | 2010-03-08 17:00 | 2010-03-08 18:00 | 10 | 0d |  |  | Country Manager | 1h | 40 |
| 12 | 1.1.2 | **1.2 Plan del Proyecto** | 3d | 2010-03-08 18:00 | 2010-03-11 18:00 |  | 0d |  |  |  | 24h | 480 |
| 13 | 1.1.2.1 | 1.2.A01 Elaborar el plan del Proyecto | 24h | 2010-03-08 18:00 | 2010-03-11 18:00 | 11 | 0d |  |  | Enrique Madrid | 24h | 480 |
| 14 | 1.1.3 | **1.3 Informes del estado del proyecto** | 130.12d | 2010-03-08 09:00 | 2010-09-06 10:00 |  | 1.42d |  |  |  | 27h | 540 |
| 15 | 1.1.3.1 | 1.3 Informes del estado del proyecto 1 | 1h | 2010-03-08 09:00 | 2010-03-08 10:00 |  | 131.42d |  | start no earlier than 2010-03-08 08:00 | Enrique Madrid | 1h | 20 |
| 16 | 1.1.3.2 | 1.3 Informes del estado del proyecto 2 | 1h | 2010-03-15 09:00 | 2010-03-15 10:00 |  | 126.42d |  | start no earlier than 2010-03-15 08:00 | Enrique Madrid | 1h | 20 |
| 17 | 1.1.3.3 | 1.3 Informes del estado del proyecto 3 | 1h | 2010-03-22 09:00 | 2010-03-22 10:00 |  | 121.42d |  | start no earlier than 2010-03-22 08:00 | Enrique Madrid | 1h | 20 |
| 18 | 1.1.3.4 | 1.3 Informes del estado del proyecto 4 | 1h | 2010-03-29 09:00 | 2010-03-29 10:00 |  | 116.42d |  | start no earlier than 2010-03-29 08:00 | Enrique Madrid | 1h | 20 |
| 19 | 1.1.3.5 | 1.3 Informes del estado del proyecto 5 | 1h | 2010-04-05 09:00 | 2010-04-05 10:00 |  | 111.42d |  | start no earlier than 2010-04-05 08:00 | Enrique Madrid | 1h | 20 |
| 20 | 1.1.3.6 | 1.3 Informes del estado del proyecto 6 | 1h | 2010-04-12 09:00 | 2010-04-12 10:00 |  | 106.42d |  | start no earlier than 2010-04-12 08:00 | Enrique Madrid | 1h | 20 |
| 21 | 1.1.3.7 | 1.3 Informes del estado del proyecto 7 | 1h | 2010-04-19 09:00 | 2010-04-19 10:00 |  | 101.42d |  | start no earlier than 2010-04-19 08:00 | Enrique Madrid | 1h | 20 |
| 22 | 1.1.3.8 | 1.3 Informes del estado del proyecto 8 | 1h | 2010-04-26 09:00 | 2010-04-26 10:00 |  | 96.42d |  | start no earlier than 2010-04-26 08:00 | Enrique Madrid | 1h | 20 |
| 23 | 1.1.3.9 | 1.3 Informes del estado del proyecto 9 | 1h | 2010-05-03 09:00 | 2010-05-03 10:00 |  | 91.42d |  | start no earlier than 2010-05-03 08:00 | Enrique Madrid | 1h | 20 |
| 24 | 1.1.3.10 | 1.3 Informes del estado del proyecto 10 | 1h | 2010-05-10 09:00 | 2010-05-10 10:00 |  | 86.42d |  | start no earlier than 2010-05-10 08:00 | Enrique Madrid | 1h | 20 |
| 25 | 1.1.3.11 | 1.3 Informes del estado del proyecto 11 | 1h | 2010-05-17 09:00 | 2010-05-17 10:00 |  | 81.42d |  | start no earlier than 2010-05-17 08:00 | Enrique Madrid | 1h | 20 |
| 26 | 1.1.3.12 | 1.3 Informes del estado del proyecto 12 | 1h | 2010-05-24 09:00 | 2010-05-24 10:00 |  | 76.42d |  | start no earlier than 2010-05-24 08:00 | Enrique Madrid | 1h | 20 |
| 27 | 1.1.3.13 | 1.3 Informes del estado del proyecto 13 | 1h | 2010-05-31 09:00 | 2010-05-31 10:00 |  | 71.42d |  | start no earlier than 2010-05-31 08:00 | Enrique Madrid | 1h | 20 |
| 28 | 1.1.3.14 | 1.3 Informes del estado del proyecto 14 | 1h | 2010-06-07 09:00 | 2010-06-07 10:00 |  | 66.42d |  | start no earlier than 2010-06-07 08:00 | Enrique Madrid | 1h | 20 |
| 29 | 1.1.3.15 | 1.3 Informes del estado del proyecto 15 | 1h | 2010-06-14 09:00 | 2010-06-14 10:00 |  | 61.42d |  | start no earlier than 2010-06-14 08:00 | Enrique Madrid | 1h | 20 |
| 30 | 1.1.3.16 | 1.3 Informes del estado del proyecto 16 | 1h | 2010-06-21 09:00 | 2010-06-21 10:00 |  | 56.42d |  | start no earlier than 2010-06-21 08:00 | Enrique Madrid | 1h | 20 |
| 31 | 1.1.3.17 | 1.3 Informes del estado del proyecto 17 | 1h | 2010-06-28 09:00 | 2010-06-28 10:00 |  | 51.42d |  | start no earlier than 2010-06-28 08:00 | Enrique Madrid | 1h | 20 |
| 32 | 1.1.3.18 | 1.3 Informes del estado del proyecto 18 | 1h | 2010-07-05 09:00 | 2010-07-05 10:00 |  | 46.42d |  | start no earlier than 2010-07-05 08:00 | Enrique Madrid | 1h | 20 |
| 33 | 1.1.3.19 | 1.3 Informes del estado del proyecto 19 | 1h | 2010-07-12 09:00 | 2010-07-12 10:00 |  | 41.42d |  | start no earlier than 2010-07-12 08:00 | Enrique Madrid | 1h | 20 |
| 34 | 1.1.3.20 | 1.3 Informes del estado del proyecto 20 | 1h | 2010-07-19 09:00 | 2010-07-19 10:00 |  | 36.42d |  | start no earlier than 2010-07-19 08:00 | Enrique Madrid | 1h | 20 |
| 35 | 1.1.3.21 | 1.3 Informes del estado del proyecto 21 | 1h | 2010-07-26 09:00 | 2010-07-26 10:00 |  | 31.42d |  | start no earlier than 2010-07-26 08:00 | Enrique Madrid | 1h | 20 |
| 36 | 1.1.3.22 | 1.3 Informes del estado del proyecto 22 | 1h | 2010-08-02 09:00 | 2010-08-02 10:00 |  | 26.42d |  | start no earlier than 2010-08-02 08:00 | Enrique Madrid | 1h | 20 |
| 37 | 1.1.3.23 | 1.3 Informes del estado del proyecto 23 | 1h | 2010-08-09 09:00 | 2010-08-09 10:00 |  | 21.42d |  | start no earlier than 2010-08-09 08:00 | Enrique Madrid | 1h | 20 |
| 38 | 1.1.3.24 | 1.3 Informes del estado del proyecto 24 | 1h | 2010-08-16 09:00 | 2010-08-16 10:00 |  | 16.42d |  | start no earlier than 2010-08-16 08:00 | Enrique Madrid | 1h | 20 |
| 39 | 1.1.3.25 | 1.3 Informes del estado del proyecto 25 | 1h | 2010-08-23 09:00 | 2010-08-23 10:00 |  | 11.42d |  | start no earlier than 2010-08-23 08:00 | Enrique Madrid | 1h | 20 |
| 40 | 1.1.3.26 | 1.3 Informes del estado del proyecto 26 | 1h | 2010-08-30 09:00 | 2010-08-30 10:00 |  | 6.42d |  | start no earlier than 2010-08-30 08:00 | Enrique Madrid | 1h | 20 |
| 41 | 1.1.3.27 | 1.3 Informes del estado del proyecto 27 | 1h | 2010-09-06 09:00 | 2010-09-06 10:00 |  | 0.92d | 0d | start no earlier than 2010-09-06 08:00 | Enrique Madrid | 1h | 20 |

| ID | WBS | Task | Duration | Start | Finish | Total slack | Free slack | Constraint | Resources | Work | Cost |
| --- | --- | --- | --- | --- | --- | --- | --- | --- | --- | --- | --- |
| 42 | 1.1.4 | **1.4 Reunión de Coordinación Semanal** | 130.12d | 2010-03-08 09:00 | 2010-09-06 10:00 | 1.42d |  |  |  | 54h | 1,620 |
| 43 | 1.1.4.1 | 1.4 Reunión de Coordinación Semanal 1 | 1h | 2010-03-08 09:00 | 2010-03-08 10:00 | 131.42d |  | start no earlier than 2010-03-08 08:00 | Enrique Madrid; Country Manager | 2h | 60 |
| 44 | 1.1.4.2 | 1.4 Reunión de Coordinación Semanal 2 | 1h | 2010-03-15 09:00 | 2010-03-15 10:00 | 126.42d |  | start no earlier than 2010-03-15 08:00 | Enrique Madrid; Country Manager | 2h | 60 |
| 45 | 1.1.4.3 | 1.4 Reunión de Coordinación Semanal 3 | 1h | 2010-03-22 09:00 | 2010-03-22 10:00 | 121.42d |  | start no earlier than 2010-03-22 08:00 | Enrique Madrid; Country Manager | 2h | 60 |
| 46 | 1.1.4.4 | 1.4 Reunión de Coordinación Semanal 4 | 1h | 2010-03-29 09:00 | 2010-03-29 10:00 | 116.42d |  | start no earlier than 2010-03-29 08:00 | Enrique Madrid; Country Manager | 2h | 60 |
| 47 | 1.1.4.5 | 1.4 Reunión de Coordinación Semanal 5 | 1h | 2010-04-05 09:00 | 2010-04-05 10:00 | 111.42d |  | start no earlier than 2010-04-05 08:00 | Enrique Madrid; Country Manager | 2h | 60 |
| 48 | 1.1.4.6 | 1.4 Reunión de Coordinación Semanal 6 | 1h | 2010-04-12 09:00 | 2010-04-12 10:00 | 106.42d |  | start no earlier than 2010-04-12 08:00 | Enrique Madrid; Country Manager | 2h | 60 |
| 49 | 1.1.4.7 | 1.4 Reunión de Coordinación Semanal 7 | 1h | 2010-04-19 09:00 | 2010-04-19 10:00 | 101.42d |  | start no earlier than 2010-04-19 08:00 | Enrique Madrid; Country Manager | 2h | 60 |
| 50 | 1.1.4.8 | 1.4 Reunión de Coordinación Semanal 8 | 1h | 2010-04-26 09:00 | 2010-04-26 10:00 | 96.42d |  | start no earlier than 2010-04-26 08:00 | Enrique Madrid; Country Manager | 2h | 60 |
| 51 | 1.1.4.9 | 1.4 Reunión de Coordinación Semanal 9 | 1h | 2010-05-03 09:00 | 2010-05-03 10:00 | 91.42d |  | start no earlier than 2010-05-03 08:00 | Enrique Madrid; Country Manager | 2h | 60 |
| 52 | 1.1.4.10 | 1.4 Reunión de Coordinación Semanal 10 | 1h | 2010-05-10 09:00 | 2010-05-10 10:00 | 86.42d |  | start no earlier than 2010-05-10 08:00 | Enrique Madrid; Country Manager | 2h | 60 |
| 53 | 1.1.4.11 | 1.4 Reunión de Coordinación Semanal 11 | 1h | 2010-05-17 09:00 | 2010-05-17 10:00 | 81.42d |  | start no earlier than 2010-05-17 08:00 | Enrique Madrid; Country Manager | 2h | 60 |
| 54 | 1.1.4.12 | 1.4 Reunión de Coordinación Semanal 12 | 1h | 2010-05-24 09:00 | 2010-05-24 10:00 | 76.42d |  | start no earlier than 2010-05-24 08:00 | Enrique Madrid; Country Manager | 2h | 60 |
| 55 | 1.1.4.13 | 1.4 Reunión de Coordinación Semanal 13 | 1h | 2010-05-31 09:00 | 2010-05-31 10:00 | 71.42d |  | start no earlier than 2010-05-31 08:00 | Enrique Madrid; Country Manager | 2h | 60 |
| 56 | 1.1.4.14 | 1.4 Reunión de Coordinación Semanal 14 | 1h | 2010-06-07 09:00 | 2010-06-07 10:00 | 66.42d |  | start no earlier than 2010-06-07 08:00 | Enrique Madrid; Country Manager | 2h | 60 |
| 57 | 1.1.4.15 | 1.4 Reunión de Coordinación Semanal 15 | 1h | 2010-06-14 09:00 | 2010-06-14 10:00 | 61.42d |  | start no earlier than 2010-06-14 08:00 | Enrique Madrid; Country Manager | 2h | 60 |
| 58 | 1.1.4.16 | 1.4 Reunión de Coordinación Semanal 16 | 1h | 2010-06-21 09:00 | 2010-06-21 10:00 | 56.42d |  | start no earlier than 2010-06-21 08:00 | Enrique Madrid; Country Manager | 2h | 60 |
| 59 | 1.1.4.17 | 1.4 Reunión de Coordinación Semanal 17 | 1h | 2010-06-28 09:00 | 2010-06-28 10:00 | 51.42d |  | start no earlier than 2010-06-28 08:00 | Enrique Madrid; Country Manager | 2h | 60 |
| 60 | 1.1.4.18 | 1.4 Reunión de Coordinación Semanal 18 | 1h | 2010-07-05 09:00 | 2010-07-05 10:00 | 46.42d |  | start no earlier than 2010-07-05 08:00 | Enrique Madrid; Country Manager | 2h | 60 |
| 61 | 1.1.4.19 | 1.4 Reunión de Coordinación Semanal 19 | 1h | 2010-07-12 09:00 | 2010-07-12 10:00 | 41.42d |  | start no earlier than 2010-07-12 08:00 | Enrique Madrid; Country Manager | 2h | 60 |
| 62 | 1.1.4.20 | 1.4 Reunión de Coordinación Semanal 20 | 1h | 2010-07-19 09:00 | 2010-07-19 10:00 | 36.42d |  | start no earlier than 2010-07-19 08:00 | Enrique Madrid; Country Manager | 2h | 60 |
| 63 | 1.1.4.21 | 1.4 Reunión de Coordinación Semanal 21 | 1h | 2010-07-26 09:00 | 2010-07-26 10:00 | 31.42d |  | start no earlier than 2010-07-26 08:00 | Enrique Madrid; Country Manager | 2h | 60 |
| 64 | 1.1.4.22 | 1.4 Reunión de Coordinación Semanal 22 | 1h | 2010-08-02 09:00 | 2010-08-02 10:00 | 26.42d |  | start no earlier than 2010-08-02 08:00 | Enrique Madrid; Country Manager | 2h | 60 |
| 65 | 1.1.4.23 | 1.4 Reunión de Coordinación Semanal 23 | 1h | 2010-08-09 09:00 | 2010-08-09 10:00 | 21.42d |  | start no earlier than 2010-08-09 08:00 | Enrique Madrid; Country Manager | 2h | 60 |
| 66 | 1.1.4.24 | 1.4 Reunión de Coordinación Semanal 24 | 1h | 2010-08-16 09:00 | 2010-08-16 10:00 | 16.42d |  | start no earlier than 2010-08-16 08:00 | Enrique Madrid; Country Manager | 2h | 60 |
| 67 | 1.1.4.25 | 1.4 Reunión de Coordinación Semanal 25 | 1h | 2010-08-23 09:00 | 2010-08-23 10:00 | 11.42d |  | start no earlier than 2010-08-23 08:00 | Enrique Madrid; Country Manager | 2h | 60 |
| 68 | 1.1.4.26 | 1.4 Reunión de Coordinación Semanal 26 | 1h | 2010-08-30 09:00 | 2010-08-30 10:00 | 6.42d |  | start no earlier than 2010-08-30 08:00 | Enrique Madrid; Country Manager | 2h | 60 |
| 69 | 1.1.4.27 | 1.4 Reunión de Coordinación Semanal 27 | 1h | 2010-09-06 09:00 | 2010-09-06 10:00 | 0.92d | 0d | start no earlier than 2010-09-06 08:00 | Enrique Madrid; Country Manager | 2h | 60 |

| ID | WBS | Task | Duration | Start | Finish | Predecessors | Total slack | Resources | Work | Cost |
| --- | --- | --- | --- | --- | --- | --- | --- | --- | --- | --- |
| 70 | 1.1.5 | **1.5 Cierre del Proyecto** | 0.5d | 2010-09-06 10:00 | 2010-09-06 16:00 |  | 0.92d |  | 4h | 80 |
| 71 | 1.1.5.1 | 1.5.A01 Elaborar documentos de cierre del proyecto | 4h | 2010-09-06 10:00 | 2010-09-06 16:00 | 41, 69, 180 | 0.92d | Enrique Madrid | 4h | 80 |
| 72 | 1.2 | **2.0 Analisis** | 3.12d | 2010-03-11 18:00 | 2010-03-16 19:00 |  | 0d |  | 48h | 720 |
| 73 | 1.2.1 | **2.1 Listado de necesidades** | 3.12d | 2010-03-11 18:00 | 2010-03-16 19:00 |  | 0d |  | 48h | 720 |
| 74 | 1.2.1.1 | 2.1.A01 Determinar las necesidades del servicio | 1d | 2010-03-11 18:00 | 2010-03-12 18:00 | 13 | 0d | Enrique Madrid; Gerardo Buytron | 16h | 240 |
| 75 | 1.2.1.2 | 2.1.A02 Determinar las especificaciones y requerimientos | 2.12d | 2010-03-12 18:00 | 2010-03-16 19:00 | 74 | 0d | Enrique Madrid; Gerardo Buytron | 32h | 480 |
| 76 | 1.3 | **3.0 Licitacion y Adquisicion** | 91.42d | 2010-03-17 09:00 | 2010-07-22 12:20 | 73 | 0d |  | 312h | 90,253.33 |
| 77 | 1.3.1 | **3.1 Licitacion** | 24.92d | 2010-03-17 09:00 | 2010-04-20 18:20 |  | 0d |  | 208h | 2,213.33 |
| 78 | 1.3.1.1 | **3.1.1 Análisis de mercado** | 5d | 2010-03-17 09:00 | 2010-03-23 19:00 |  | 0d |  | 40h | 400 |
| 79 | 1.3.1.1.1 | 3.1.1.A01 Determinar la capacidad interna y de los costos | 1d | 2010-03-17 09:00 | 2010-03-17 19:00 |  | 0d | Gerardo Buytron | 8h | 80 |
| 80 | 1.3.1.1.2 | 3.1.1.A02 Identificar proveedores calificados | 1d | 2010-03-18 09:00 | 2010-03-18 19:00 | 79 | 0d | Gerardo Buytron | 8h | 80 |
| 81 | 1.3.1.1.3 | 3.1.1.A03 Elaborar RFI | 1d | 2010-03-19 09:00 | 2010-03-19 19:00 | 80 | 0d | Gerardo Buytron | 8h | 80 |
| 82 | 1.3.1.1.4 | 3.1.1.A04 Recepcionar RFIs | 1d | 2010-03-22 09:00 | 2010-03-22 19:00 | 81 | 0d | Gerardo Buytron | 8h | 80 |
| 83 | 1.3.1.1.5 | 3.1.1.A05 Decisiones | 1d | 2010-03-23 09:00 | 2010-03-23 19:00 | 82 | 0d | Gerardo Buytron | 8h | 80 |
| 84 | 1.3.1.2 | **3.1.2 Solicitud de propuesta (RFP)** | 4d | 2010-03-24 09:00 | 2010-03-29 19:00 |  | 0d |  | 32h | 320 |
| 85 | 1.3.1.2.1 | 3.1.2.A01 Desarrollar el criterio de solucion | 2d | 2010-03-24 09:00 | 2010-03-25 19:00 | 83 | 0d | Gerardo Buytron | 16h | 160 |
| 86 | 1.3.1.2.2 | 3.1.2.A02 Desarrollar las bases tecnicas | 2d | 2010-03-26 09:00 | 2010-03-29 19:00 | 85 | 0d | Gerardo Buytron | 16h | 160 |
| 87 | 1.3.1.3 | **3.1.3 Carta de Intención (LOI)** | 15.92d | 2010-03-30 09:00 | 2010-04-20 18:20 |  | 0d |  | 136h | 1,493.33 |
| 88 | 1.3.1.3.1 | 3.1.3.A01 Emitir el RFQ | 0.92d | 2010-03-30 09:00 | 2010-03-30 18:20 | 86 | 0d | Gerardo Buytron; Enrique Madrid | 8h | 133.33 |
| 89 | 1.3.1.3.2 | 3.1.3.A02 Emitir el RFP | 1d | 2010-03-30 18:20 | 2010-03-31 18:20 | 88 | 0d | Gerardo Buytron; Enrique Madrid | 16h | 240 |
| 90 | 1.3.1.3.3 | 3.1.3.A03 Recibir ofertas | 5d | 2010-03-31 18:20 | 2010-04-07 18:20 | 89 | 0d | Gerardo Buytron | 40h | 400 |
| 91 | 1.3.1.3.4 | 3.1.3.A04 Evaluar Respuestas | 5d | 2010-04-07 18:20 | 2010-04-14 18:20 | 90 | 0d | Gerardo Buytron | 40h | 400 |
| 92 | 1.3.1.3.5 | 3.1.3.A05 Calificar proveedores | 2d | 2010-04-14 18:20 | 2010-04-16 18:20 | 91 | 0d | Gerardo Buytron | 16h | 160 |
| 93 | 1.3.1.3.6 | 3.1.3.A06 Adjudicar/Seleccionar Proveedores | 1d | 2010-04-16 18:20 | 2010-04-19 18:20 | 92 | 0d | Gerardo Buytron | 8h | 80 |
| 94 | 1.3.1.3.7 | 3.1.3.A07 Emitir Carta de Intención (LOI) | 1d | 2010-04-19 18:20 | 2010-04-20 18:20 | 93 | 0d | Gerardo Buytron | 8h | 80 |

| ID | WBS | Task | Duration | Start | Finish | Predecessors | Total slack | Free slack | Resources | Work | Cost |
| --- | --- | --- | --- | --- | --- | --- | --- | --- | --- | --- | --- |
| 95 | 1.3.2 | **3.2 Adquisicion** | 66.5d | 2010-04-20 18:20 | 2010-07-22 12:20 |  | 0d |  |  | 104h | 88,040 |
| 96 | 1.3.2.1 | **3.2.1 Contrato Solucion Movil** | 3.5d | 2010-04-20 18:20 | 2010-04-26 12:20 |  | 0d |  |  | 28h | 280 |
| 97 | 1.3.2.1.1 | 3.2.1.A01 Desarrollar el contrato marco | 2.5d | 2010-04-20 18:20 | 2010-04-23 12:20 | 94 | 0d |  | Silvia Torero | 20h | 200 |
| 98 | 1.3.2.1.2 | 3.2.1.A02 Determinar cronograma | 0.5d | 2010-04-23 12:20 | 2010-04-23 18:20 | 97 | 0d |  | Silvia Torero | 4h | 40 |
| 99 | 1.3.2.1.3 | 3.2.1.A03 Determinar el presupuesto | 0.5d | 2010-04-23 18:20 | 2010-04-26 12:20 | 98 | 0d |  | Silvia Torero | 4h | 40 |
| 100 | 1.3.2.2 | **3.2.2 Contrato equipos y suministros** | 7.92d | 2010-04-20 18:20 | 2010-04-30 17:40 |  | 40.71d |  |  | 28h | 280 |
| 101 | 1.3.2.2.1 | 3.2.2.A01 Desarrollar el contrato marco | 2.5d | 2010-04-20 18:20 | 2010-04-29 17:40 | 94 | 40.71d | 0d | Silvia Torero | 20h | 200 |
| 102 | 1.3.2.2.2 | 3.2.2.A02 Determinar cronograma | 0.5d | 2010-04-29 17:40 | 2010-04-30 11:40 | 101 | 40.71d | 0d | Silvia Torero | 4h | 40 |
| 103 | 1.3.2.2.3 | 3.2.2.A03 Determinar el presupuesto | 0.5d | 2010-04-30 11:40 | 2010-04-30 17:40 | 102 | 40.71d | 0d | Silvia Torero | 4h | 40 |
| 104 | 1.3.2.3 | **3.2.3 Orden de Compra solucion movil** | 1d | 2010-04-26 12:20 | 2010-04-27 12:20 |  | 0d |  |  | 8h | 80 |
| 105 | 1.3.2.3.1 | 3.2.3.A01 Solicitar la aprobacion del gasto | 0.5d | 2010-04-26 12:20 | 2010-04-26 18:20 | 99 | 0d |  | Silvia Torero | 4h | 40 |
| 106 | 1.3.2.3.2 | 3.2.3.A02 Solicitar la emision de la orden de compra | 0.5d | 2010-04-26 18:20 | 2010-04-27 12:20 | 105 | 0d |  | Silvia Torero | 4h | 40 |
| 107 | 1.3.2.4 | **3.2.4 Orden de compra equipos y suministros** | 1d | 2010-04-30 17:40 | 2010-05-03 17:40 |  | 40.71d |  |  | 8h | 80 |
| 108 | 1.3.2.4.1 | 3.2.4.A01 Solicitar la aprobacion del gasto | 0.5d | 2010-04-30 17:40 | 2010-05-03 11:40 | 103 | 40.71d | 0d | Silvia Torero | 4h | 40 |
| 109 | 1.3.2.4.2 | 3.2.4.A02 Solicitar la emision de la orden de compra | 0.5d | 2010-05-03 11:40 | 2010-05-03 17:40 | 108 | 40.71d | 0d | Silvia Torero | 4h | 40 |
| 110 | 1.3.2.5 | **3.2.5 Aplicativo movil** | 62d | 2010-04-27 12:20 | 2010-07-22 12:20 |  | 0d |  |  | 16h | 15,160 |
| 111 | 1.3.2.5.1 | 3.2.5.A01 Construcción aplicativo móvil | 60d | 2010-04-27 12:20 | 2010-07-20 12:20 | 106 | 0d |  | Aplicativo móvil |  | 15,000 |
| 112 | 1.3.2.5.2 | 3.2.5.A02 Aprobacion del aplicativo movil | 2d | 2010-07-20 12:20 | 2010-07-22 12:20 | 111 | 0d |  | Silvia Torero | 16h | 160 |
| 113 | 1.3.2.6 | **3.2.6 Equipos y suministros** | 32d | 2010-05-03 17:40 | 2010-06-16 17:40 |  | 40.71d |  |  | 16h | 72,160 |
| 114 | 1.3.2.6.1 | 3.2.5.A01 Importación de impresoras | 30d | 2010-05-03 17:40 | 2010-06-14 17:40 | 109 | 40.71d | 0d | Impresoras |  | 60,000 |
| 115 | 1.3.2.6.2 | 3.2.5.A02 Impresión de documentos de venta | 20d | 2010-05-03 17:40 | 2010-05-31 17:40 | 109 | 50.71d | 10d | Documentos de venta |  | 12,000 |
| 116 | 1.3.2.6.3 | 3.2.6.A03 Aprobacion de los equipos y suministros | 2d | 2010-06-14 17:40 | 2010-06-16 17:40 | 114, 115 | 40.71d | 25.58d | Silvia Torero | 16h | 160 |
| 117 | 1.4 | **4.0 Implementacion** | 22.12d | 2010-07-22 12:20 | 2010-08-23 15:20 |  | 0d |  |  | 184h | 2,160 |
| 118 | 1.4.1 | **4.1 Etapa 1** | 6d | 2010-07-22 12:20 | 2010-07-30 12:20 |  | 0d |  |  | 48h | 560 |
| 119 | 1.4.1.1 | **4.1.1 Solucion Movil implementada** | 4d | 2010-07-22 12:20 | 2010-07-28 12:20 |  | 0d |  |  | 32h | 320 |
| 120 | 1.4.1.1.1 | 4.1.1.A01 Implementar la solución móvil en la empresa | 2d | 2010-07-22 12:20 | 2010-07-26 12:20 | 112 | 0d |  | Marco Soto | 16h | 160 |
| 121 | 1.4.1.1.2 | 4.1.1.A02 Integrar la solución móvil la backend de la empresa | 1d | 2010-07-26 12:20 | 2010-07-27 12:20 | 120 | 0d |  | Marco Soto | 8h | 80 |
| 122 | 1.4.1.1.3 | 4.1.1.A03 Realizar pruebas en el sistema antes de la implementacion | 1d | 2010-07-27 12:20 | 2010-07-28 12:20 | 121 | 0d |  | Marco Soto | 8h | 80 |

| ID | WBS | Task | Duration | Start | Finish | Predecessors | Total slack | Free slack | Resources | Work | Cost |
| --- | --- | --- | --- | --- | --- | --- | --- | --- | --- | --- | --- |
| 123 | 1.4.1.2 | **4.1.2 Reporte implementacion** | 2d | 2010-07-28 12:20 | 2010-07-30 12:20 |  | 0d |  |  | 16h | 240 |
| 124 | 1.4.1.2.1 | 4.1.2.A01 Elaborar el reporte de la etapa 1 | 1d | 2010-07-28 12:20 | 2010-07-29 12:20 | 122 | 0d |  | Marco Soto | 8h | 80 |
| 125 | 1.4.1.2.2 | 4.1.2.A02 Revisar el reporte de la etapa 1 | 1d | 2010-07-29 12:20 | 2010-07-30 12:20 | 124 | 0d |  | Enrique Madrid | 8h | 160 |
| 126 | 1.4.2 | **4.2 Etapa 2** | 13d | 2010-08-02 12:20 | 2010-08-19 12:20 |  | 0d |  |  | 48h | 560 |
| 127 | 1.4.2.1 | **4.2.1 Terminales móviles operativos** | 10d | 2010-08-02 12:20 | 2010-08-16 12:20 |  | 0d |  |  | 32h | 320 |
| 128 | 1.4.2.1.1 | 4.2.1.A01 Identificar a los usuarios de aplicativo móvil | 1d | 2010-08-02 12:20 | 2010-08-03 12:20 | 125 | 0d |  | Marco Soto | 8h | 80 |
| 129 | 1.4.2.1.2 | 4.2.1.A02 Entregar terminales móviles a usuarios | 1d | 2010-08-09 12:20 | 2010-08-10 12:20 | 128 | 0d |  | Marco Soto | 8h | 80 |
| 130 | 1.4.2.1.3 | 4.2.1.A03 Validar la operatividad del aplicativo móvil | 2d | 2010-08-12 12:20 | 2010-08-16 12:20 | 129 | 0d |  | Marco Soto | 16h | 160 |
| 131 | 1.4.2.2 | **4.2.2 Reporte implementacion de terminales** | 2d | 2010-08-17 12:20 | 2010-08-19 12:20 |  | 0d |  |  | 16h | 240 |
| 132 | 1.4.2.2.1 | 4.2.2.A01 Elaborar el reporte de la etapa 2 | 1d | 2010-08-17 12:20 | 2010-08-18 12:20 | 130 | 0d |  | Marco Soto | 8h | 80 |
| 133 | 1.4.2.2.2 | 4.2.2.A02 Revisar el reporte de la etapa 2 | 1d | 2010-08-18 12:20 | 2010-08-19 12:20 | 132 | 0d |  | Enrique Madrid | 8h | 160 |
| 134 | 1.4.3 | **4.3 Etapa 3** | 13d | 2010-07-30 12:20 | 2010-08-18 12:20 |  | 1d |  |  | 72h | 800 |
| 135 | 1.4.3.1 | **4.3.1 Impresoras y suminitros operativos** | 9d | 2010-07-30 12:20 | 2010-08-12 12:20 |  | 1d |  |  | 56h | 560 |
| 136 | 1.4.3.1.1 | 4.3.1.A01 Identificar las unidades de transporte que utilizarán la solución móvil | 1d | 2010-07-30 12:20 | 2010-08-02 12:20 | 125 | 1d | 0d | Marco Soto | 8h | 80 |
| 137 | 1.4.3.1.2 | 4.3.1.A02 Instalar las impresoras y suministros en las unidades de transporte identificadas | 4d | 2010-08-03 12:20 | 2010-08-09 12:20 | 136 | 1d | 0d | Marco Soto | 32h | 320 |
| 138 | 1.4.3.1.3 | 4.3.1.A03 Validar la operatividad de las impresoras y suministros | 2d | 2010-08-10 12:20 | 2010-08-12 12:20 | 137 | 1d | 0d | Marco Soto | 16h | 160 |
| 139 | 1.4.3.2 | **4.3.2 Reporte de implementacion de equipos** | 2d | 2010-08-16 12:20 | 2010-08-18 12:20 |  | 1d |  |  | 16h | 240 |
| 140 | 1.4.3.2.1 | 4.3.2.A01 Elaborar el reporte de la etapa 3 | 1d | 2010-08-16 12:20 | 2010-08-17 12:20 | 138 | 1d | 0d | Marco Soto | 8h | 80 |
| 141 | 1.4.3.2.2 | 4.3.2.A02 Revisar el reporte de la etapa 3 | 1d | 2010-08-17 12:20 | 2010-08-18 12:20 | 140 | 1d |  | Enrique Madrid | 8h | 160 |
| 142 | 1.4.4 | **4.4 Etapa 4** | 2.12d | 2010-08-19 12:20 | 2010-08-23 15:20 |  | 0d |  |  | 16h | 240 |
| 143 | 1.4.4.1 | **4.4.1 Documento solucion a problemas** | 2.12d | 2010-08-19 12:20 | 2010-08-23 15:20 |  | 0d |  |  | 16h | 240 |
| 144 | 1.4.4.1.1 | 4.4.1A01 Elaborar el documento de solucion a problemas. | 1d | 2010-08-19 12:20 | 2010-08-20 12:20 | 133, 141 | 0d |  | Marco Soto | 8h | 80 |
| 145 | 1.4.4.1.2 | 4.4.1A02 Revisar el reporte de solucion de problemas | 1d | 2010-08-20 12:20 | 2010-08-23 15:20 | 144 | 0d |  | Enrique Madrid | 8h | 160 |
| 146 | 1.5 | **5.0 Capacitacion** | 7d | 2010-07-22 12:20 | 2010-08-02 12:20 |  | 15.12d |  |  | 48h | 740 |
| 147 | 1.5.1 | **5.1 Dictado** | 2d | 2010-07-22 12:20 | 2010-07-26 12:20 |  | 15.12d |  |  | 16h | 340 |
| 148 | 1.5.1.1 | 5.1.A01 Realizar la sesion | 2d | 2010-07-22 12:20 | 2010-07-26 12:20 | 112, 116 | 15.12d | 0d | Lissette Davila; Material de capacitación | 16h | 340 |

| ID | WBS | Task | Duration | Start | Finish | Predecessors | Total slack | Free slack | Resources | Work | Cost |
| --- | --- | --- | --- | --- | --- | --- | --- | --- | --- | --- | --- |
| 149 | 1.5.2 | **5.2 Control de evaluacion** | 2d | 2010-07-26 12:20 | 2010-07-28 12:20 |  | 15.12d |  |  | 16h | 160 |
| 150 | 1.5.2.1 | 5.2.A01 Elaborar controles de evaluacion | 1d | 2010-07-26 12:20 | 2010-07-27 12:20 | 148 | 15.12d | 0d | Lissette Davila | 8h | 80 |
| 151 | 1.5.2.2 | 5.2.A02 Revisar controles de capacitacion | 1d | 2010-07-27 12:20 | 2010-07-28 12:20 | 150 | 15.12d | 0d | Lissette Davila | 8h | 80 |
| 152 | 1.5.3 | **5.3 Informe** | 3d | 2010-07-28 12:20 | 2010-08-02 12:20 |  | 15.12d |  |  | 16h | 240 |
| 153 | 1.5.3.1 | 5.3.A01 Elaborar el informe de la sesion | 1d | 2010-07-28 12:20 | 2010-07-29 12:20 | 151 | 15.12d | 0d | Lissette Davila | 8h | 80 |
| 154 | 1.5.3.2 | 5.3.A02 Revisar informe | 1d | 2010-07-30 12:20 | 2010-08-02 12:20 | 153 | 15.12d |  | Enrique Madrid | 8h | 160 |
| 155 | 1.6 | **6. 0 Salida en vivo** | 11d | 2010-08-23 15:20 | 2010-09-07 15:20 |  | 0d |  |  | 176h | 1,840 |
| 156 | 1.6.1 | 6.0.A1 Puesta en marcha del aplicativo | 1d | 2010-08-23 15:20 | 2010-08-24 15:20 | 145, 154 | 0d |  | Marco Soto; Enrique Madrid | 16h | 240 |
| 157 | 1.6.2 | 6.0.A2 Seguimiento a usuarios | 10d | 2010-08-24 15:20 | 2010-09-07 15:20 | 156 | 0d |  | Gerardo Buytron; Marco Soto | 160h | 1,600 |
| 158 | 1.7 | **7.0 Informes** | 110.5d | 2010-03-29 18:00 | 2010-08-31 12:00 |  | 4.67d |  |  | 28h | 700 |
| 159 | 1.7.1 | **7.1 Informe mensual** | 110d | 2010-03-29 18:00 | 2010-08-30 18:00 |  | 4.67d |  |  | 24h | 600 |
| 160 | 1.7.1.1 | **7.1.1 Informe mes 1** | 0.5d | 2010-03-29 18:00 | 2010-03-30 12:00 |  | 4.67d |  |  | 4h | 100 |
| 161 | 1.7.1.1.1 | 7.1.1.A01 Elaborar informe mensual 1 | 3h | 2010-03-29 18:00 | 2010-03-30 11:00 | 13FS+12d | 4.67d | 0d | Enrique Madrid | 3h | 60 |
| 162 | 1.7.1.1.2 | 7.1.1.A02 Revisar informe 1 | 1h | 2010-03-30 11:00 | 2010-03-30 12:00 | 161 | 4.67d | 0d | Country Manager | 1h | 40 |
| 163 | 1.7.1.2 | **7.1.2 Informe mes 2** | 0.5d | 2010-04-30 12:00 | 2010-04-30 18:00 |  | 4.67d |  |  | 4h | 100 |
| 164 | 1.7.1.2.1 | 7.1.2.A01 Elaborar informe mensual 2 | 3h | 2010-04-30 12:00 | 2010-04-30 17:00 | 162FS+23d | 4.67d | 0d | Enrique Madrid | 3h | 60 |
| 165 | 1.7.1.2.2 | 7.1.2.A02 Revisar informe 2 | 1h | 2010-04-30 17:00 | 2010-04-30 18:00 | 164 | 4.67d | 0d | Country Manager | 1h | 40 |
| 166 | 1.7.1.3 | **7.1.3 Informe mes 3** | 0.5d | 2010-05-28 18:00 | 2010-05-31 12:00 |  | 4.67d |  |  | 4h | 100 |
| 167 | 1.7.1.3.1 | 7.1.3.A01 Elaborar informe mensual 3 | 3h | 2010-05-28 18:00 | 2010-05-31 11:00 | 165FS+20d | 4.67d | 0d | Enrique Madrid | 3h | 60 |
| 168 | 1.7.1.3.2 | 7.1.3.A02 Revisar informe 3 | 1h | 2010-05-31 11:00 | 2010-05-31 12:00 | 167 | 4.67d | 0d | Country Manager | 1h | 40 |
| 169 | 1.7.1.4 | **7.1.4 Informe mes 4** | 0.5d | 2010-06-30 12:00 | 2010-06-30 18:00 |  | 4.67d |  |  | 4h | 100 |
| 170 | 1.7.1.4.1 | 7.1.4.A01 Elaborar informe mensual 4 | 3h | 2010-06-30 12:00 | 2010-06-30 17:00 | 168FS+22d | 4.67d | 0d | Enrique Madrid | 3h | 60 |
| 171 | 1.7.1.4.2 | 7.1.4.A02 Revisar informe 4 | 1h | 2010-06-30 17:00 | 2010-06-30 18:00 | 170 | 4.67d | 0d | Country Manager | 1h | 40 |
| 172 | 1.7.1.5 | **7.1.5 Informe mes 5** | 0.5d | 2010-07-28 18:00 | 2010-07-29 12:00 |  | 4.67d |  |  | 4h | 100 |
| 173 | 1.7.1.5.1 | 7.1.5.A01 Elaborar informe mensual 5 | 3h | 2010-07-28 18:00 | 2010-07-29 11:00 | 171FS+20d | 4.67d | 0d | Enrique Madrid | 3h | 60 |
| 174 | 1.7.1.5.2 | 7.1.5.A02 Revisar informe 5 | 1h | 2010-07-29 11:00 | 2010-07-29 12:00 | 173 | 4.67d | 0d | Country Manager | 1h | 40 |

| ID | WBS | Task | Duration | Start | Finish | Predecessors | Total slack | Free slack | Resources | Work | Cost |
| --- | --- | --- | --- | --- | --- | --- | --- | --- | --- | --- | --- |
| 175 | 1.7.1.6 | **7.1.6 Informe mes 6** | 0.5d | 2010-08-30 12:00 | 2010-08-30 18:00 |  | 4.67d |  |  | 4h | 100 |
| 176 | 1.7.1.6.1 | 7.1.6.A01 Elaborar informe mensual 6 | 3h | 2010-08-30 12:00 | 2010-08-30 17:00 | 174FS+22d | 4.67d | 0d | Enrique Madrid | 3h | 60 |
| 177 | 1.7.1.6.2 | 7.1.6.A02 Revisar informe 6 | 1h | 2010-08-30 17:00 | 2010-08-30 18:00 | 176 | 4.67d | 0d | Country Manager | 1h | 40 |
| 178 | 1.7.2 | **7.2 Informe final** | 0.5d | 2010-08-30 18:00 | 2010-08-31 12:00 |  | 4.67d |  |  | 4h | 100 |
| 179 | 1.7.2.1 | 7.2.A01 Elaborar informe final | 3h | 2010-08-30 18:00 | 2010-08-31 11:00 | 177 | 4.67d | 0d | Enrique Madrid | 3h | 60 |
| 180 | 1.7.2.2 | 7.2.A02 Revisar informe final | 1h | 2010-08-31 11:00 | 2010-08-31 12:00 | 179 | 4.67d | 3.75d | Country Manager | 1h | 40 |
